# OpenModelica Backend Development

How a schedule from GanttProject changed from version to version. A marks actual dates.

## Version 1 (saved 2012-06-01)

Note of the change: - added Workplan created with gantt((see http://www.ganttproject.biz (it's open source and for Windows, OSX, Linux)) as replacement for excel sheet. - right now only FMI and Backend planning is included, please feel free update with other tasks.

| ID | WBS | Task | Duration | Start | Finish | Predecessors | Complete |
| --- | --- | --- | --- | --- | --- | --- | --- |
| 1 | 1 | **Backend Design** | 33d | 2012-06-01 | 2012-07-17 |  |  |
| 2 |  | Tech. Documentation (draft) | 14d | 2012-06-01 | 2012-06-20 |  |  |
| 3 |  | Tech. Documentation (final) | 10d | 2012-06-21 | 2012-07-04 | 2 |  |
| 4 |  | Create ideal flow and data chart | 14d | 2012-06-21 | 2012-07-10 | 2 |  |
| 5 |  | Tech. Doc. simulation c-runtime | 3d | 2012-06-01 | 2012-06-05 |  |  |
| 6 |  | Tech. Doc. simulation cpp-runtime | 3d | 2012-06-01 | 2012-06-05 |  |  |
| 7 |  | Design ideal flow and data document | 5d | 2012-07-11 | 2012-07-17 | 3, 4, 5, 6 |  |
| 8 | 2 | **Backend readability (Implmentation)** | 50d | 2012-06-01 | 2012-08-09 |  |  |
| 9 |  | Tearing as post-optim module | 2d | 2012-06-01 | 2012-06-04 |  |  |
| 10 |  | sparsity pattern as post-optim module | 2d | 2012-06-01 | 2012-06-04 |  |  |
| 11 |  | coloring as post-optim module | 2d | 2012-06-01 | 2012-06-04 |  |  |
| 12 |  | Restruct SImCode.mo and SIMCODE | 50d | 2012-06-01 | 2012-08-09 |  |  |
| 13 |  | revise data-struct of the Incidence-Matrix | 3d | 2012-06-01 | 2012-06-05 |  |  |
| 14 |  | Merge differentiate Function | 10d | 2012-06-01 | 2012-06-14 |  |  |
| 15 | 3 | **Backend robustness and library support** | 60d | 2012-06-01 | 2012-08-23 |  |  |
| 16 |  | MultiBody library simulation | 15d | 2012-06-01 | 2012-06-21 |  |  |
| 17 |  | Figure out issues for simulate Media example | 5d | 2012-06-01 | 2012-06-07 |  |  |
| 18 |  | Make the Media library simulate | 15d | 2012-06-08 | 2012-06-28 | 17 |  |
| 19 |  | revise non-linear system handling | 10d | 2012-06-01 | 2012-06-14 |  |  |
| 20 |  | Figure out ThermoSysLib simulation issues | 3d | 2012-06-01 | 2012-06-05 |  | 30% |
| 21 |  | ThermoSysLib library simulation | 5d | 2012-06-06 | 2012-06-12 | 20 |  |
| 22 |  | solving stategie for algebraic loop involving integer | 60d | 2012-06-01 | 2012-08-23 |  |  |
| 23 |  | Make other MSL example model simulates | 1d | 2012-06-01 | 2012-06-01 |  |  |
| 24 |  | Find initialize issues for ThermoSys simulation | 25d | 2012-07-13 | 2012-08-16 | 28 |  |
| 25 |  | Find initialize issues for MultiBody simulation | 10d | 2012-07-13 | 2012-07-26 | 28 |  |
| 26 | 4 | **Backend performance** | 133d | 2012-06-01 | 2012-12-04 |  | 4% |
| 27 |  | Design and Implementation of a better tearing strategy | 40d | 2012-06-05 | 2012-07-30 | 9 |  |
| 28 |  | Improvement and Robostness of initialization | 30d | 2012-06-01 | 2012-07-12 |  |  |
| 29 |  | Implement of Homotopy operator | 30d | 2012-06-01 | 2012-07-12 |  |  |
| 30 |  | Dynamic State Selection | 1d | 2012-06-01 | 2012-06-01 |  |  |
| 31 |  | Non-Expanded arrays | 100d | 2012-07-18 | 2012-12-04 | 7 |  |
| 32 |  | Compressed DASSL | 5d | 2012-06-05 | 2012-06-11 | 10, 11 |  |
| 33 |  | revise BackendDAEUtil.getSolvedSystem | 10d | 2012-06-01 | 2012-06-14 |  | 40% |
| 34 |  | reduce compile time of runtime | 5d | 2012-08-10 | 2012-08-16 | 12 |  |
| 35 | 5 | **Update FMI including co-simulation** | 55d | 2012-06-01 | 2012-08-16 |  |  |
| 36 | 5.1 | **FMI Comman Functionality** | 15d | 2012-06-01 | 2012-06-21 |  |  |
| 37 |  | Common header files, functions, platform depended definitions. | 5d | 2012-06-01 | 2012-06-07 |  |  |
| 38 |  | XML parser, loading and validating the dynamic link library (dll/so). | 5d | 2012-06-08 | 2012-06-14 | 37 |  |
| 39 |  | FMU Instances creation, logging. | 5d | 2012-06-15 | 2012-06-21 | 38 |  |
| 40 |  | FMI-Unit for Co-Simulation | 7d | 2012-06-01 | 2012-06-11 |  |  |
| 41 |  | FMI 2.0 Implementation (partial prototype) | 30d | 2012-06-01 | 2012-07-12 |  |  |
| 42 |  | FMI Master implementation (a) | 15d | 2012-06-22 | 2012-07-12 | 39, 40 |  |
| 43 |  | FMI Master implementation (b) | 15d | 2012-07-13 | 2012-08-02 | 42 |  |
| 44 |  | FMI Re-Implement FMI-Import for FMI1.0 Co-Simulation and FMI2.0 usage | 20d | 2012-06-01 | 2012-06-28 |  |  |
| 45 |  | FMI Implementing communication algorithm between master and slaves. | 10d | 2012-08-03 | 2012-08-16 | 43 |  |
| 46 | 6 | **Other Things** | 30d | 2012-06-01 | 2012-07-12 |  |  |
| 47 |  | Finalize prototype uncertainty | 10d | 2012-06-01 | 2012-06-14 |  |  |
| 48 |  | Extend Test suite | 30d | 2012-06-01 | 2012-07-12 |  |  |

## Version 2 (saved 2012-06-04)

Note of the change: - updated gantt workplan with frontend tasks

Last finish 2012-12-04 → 2012-12-12 (+8d). Complete tasks 0 → 1.

Added:

| ID | Task | Duration | Start | Finish | Resources |
| --- | --- | --- | --- | --- | --- |
| 1 | **Frontend** | 20d | 2012-06-11 | 2012-07-06 |  |
| 2 | **New Instantiation completion** | 20d | 2012-06-11 | 2012-07-06 |  |
| 3 | Prefixing/subscripting of expressions | 7d | 2012-06-11 | 2012-06-19 | Per |
| 4 | Instantiation/typing of equations | 2d | 2012-06-11 | 2012-06-12 |  |
| 5 | Instantiation/typing of algorithms | 3d | 2012-06-11 | 2012-06-13 | Adrain |
| 6 | Instantiation/typing of functions | 3d | 2012-06-11 | 2012-06-13 |  |
| 7 | Connection handling, standard and expandable connections | 20d | 2012-06-11 | 2012-07-06 |  |
| 8 | Connection handling, connection breaking with connection graph update | 2d | 2012-06-11 | 2012-06-12 | Adrain |
| 9 | Function interpretation update for new instantiation and symbol table | 10d | 2012-06-11 | 2012-06-22 | Martin |
| 10 | Improve datatype support (enumerations, records) | 7d | 2012-06-11 | 2012-06-19 | Martin |
| 11 | Propagate variability information | 2d | 2012-06-11 | 2012-06-12 | Adrain |
| 12 | Further expansion improvements | 4d | 2012-06-11 | 2012-06-14 | Adrain [50%]; Per [50%] |
| 13 | Type checking and internal type casting | 7d | 2012-06-11 | 2012-06-19 | Adrain |
| 14 | Support Very-light Fluid subset from Kilian | 1d | 2012-06-11 | 2012-06-11 | Per |
| 15 | Full Support for Fluid library | 1d | 2012-06-11 | 2012-06-11 | Adrain; Martin; Per |
| 16 | **Finish Garbage collection (GC), Separate compilation, Updated MDT/OMDev** | 6d | 2012-06-11 | 2012-06-18 |  |
| 17 | Garbage collection (GC) with same performane as RML-based GC | 1d | 2012-06-11 | 2012-06-11 | Adrain |
| 18 | Separate compilation | 6d | 2012-06-11 | 2012-06-18 | Adrain |
| 19 | Deployment of GC and separate compilation in updated MDT/OMDEV | 3d | 2012-06-11 | 2012-06-13 | Adrain; Martin |
| 20 | GC with higher performance than RML-based GC | 1d | 2012-06-11 | 2012-06-11 | Adrain |
| 21 | **Backend** | 133d | 2012-06-11 | 2012-12-12 |  |

Changed:

| ID | Task | Start | Finish | Other |
| --- | --- | --- | --- | --- |
| 22 | **Backend Design** | 2012-06-01 → 2012-06-11 (+10d) | 2012-07-17 → 2012-07-25 (+8d) |  |
| 23 | Tech. Documentation (draft) | 2012-06-01 → 2012-06-11 (+10d) | 2012-06-20 → 2012-06-28 (+8d) |  |
| 24 | Tech. Documentation (final) | 2012-06-21 → 2012-06-29 (+8d) | 2012-07-04 → 2012-07-12 (+8d) |  |
| 25 | Create ideal flow and data chart | 2012-06-21 → 2012-06-29 (+8d) | 2012-07-10 → 2012-07-18 (+8d) |  |
| 26 | Tech. Doc. simulation c-runtime | 2012-06-01 → 2012-06-11 (+10d) | 2012-06-05 → 2012-06-13 (+8d) |  |
| 27 | Tech. Doc. simulation cpp-runtime | 2012-06-01 → 2012-06-11 (+10d) | 2012-06-05 → 2012-06-13 (+8d) |  |
| 28 | Design ideal flow and data document | 2012-07-11 → 2012-07-19 (+8d) | 2012-07-17 → 2012-07-25 (+8d) |  |
| 29 | **Backend readability (Implmentation)** | 2012-06-01 → 2012-06-11 (+10d) | 2012-08-09 → 2012-08-17 (+8d) |  |
| 30 | Tearing as post-optim module | 2012-06-01 → 2012-06-11 (+10d) | 2012-06-04 → 2012-06-12 (+8d) |  |
| 31 | sparsity pattern as post-optim module | 2012-06-01 → 2012-06-11 (+10d) | 2012-06-04 → 2012-06-12 (+8d) |  |
| 32 | coloring as post-optim module | 2012-06-01 → 2012-06-11 (+10d) | 2012-06-04 → 2012-06-12 (+8d) |  |
| 33 | Restruct SImCode.mo and SIMCODE | 2012-06-01 → 2012-06-11 (+10d) | 2012-08-09 → 2012-08-17 (+8d) |  |
| 34 | revise data-struct of the Incidence-Matrix | 2012-06-01 → 2012-06-11 (+10d) | 2012-06-05 → 2012-06-13 (+8d) |  |
| 35 | Merge differentiate Function | 2012-06-01 → 2012-06-11 (+10d) | 2012-06-14 → 2012-06-22 (+8d) |  |
| 36 | **Backend robustness and library support** | 2012-06-01 → 2012-06-11 (+10d) | 2012-08-23 → 2012-08-31 (+8d) |  |
| 37 | MultiBody library simulation | 2012-06-01 → 2012-06-11 (+10d) | 2012-06-21 → 2012-06-29 (+8d) |  |
| 38 | Figure out issues for simulate Media example | 2012-06-01 → 2012-06-11 (+10d) | 2012-06-07 → 2012-06-15 (+8d) |  |
| 39 | Make the Media library simulate | 2012-06-08 → 2012-06-18 (+10d) | 2012-06-28 → 2012-07-06 (+8d) |  |
| 40 | revise non-linear system handling | 2012-06-01 → 2012-06-11 (+10d) | 2012-06-14 → 2012-06-22 (+8d) |  |
| 41 | Figure out ThermoSysLib simulation issues | 2012-06-01 → 2012-06-11 (+10d) | 2012-06-05 → 2012-06-13 (+8d) |  |
| 42 | ThermoSysLib library simulation | 2012-06-06 → 2012-06-14 (+8d) | 2012-06-12 → 2012-06-20 (+8d) |  |
| 43 | solving stategie for algebraic loop involving integer | 2012-06-01 → 2012-06-11 (+10d) | 2012-08-23 → 2012-08-31 (+8d) |  |
| 44 | Make other MSL example model simulates | 2012-06-01 → 2012-06-11 (+10d) | 2012-06-01 → 2012-06-11 (+10d) |  |
| 45 | Find initialize issues for ThermoSys simulation | 2012-07-13 → 2012-07-23 (+10d) | 2012-08-16 → 2012-08-24 (+8d) |  |
| 46 | Find initialize issues for MultiBody simulation | 2012-07-13 → 2012-07-23 (+10d) | 2012-07-26 → 2012-08-03 (+8d) |  |
| 47 | **Backend performance** | 2012-06-01 → 2012-06-11 (+10d) | 2012-12-04 → 2012-12-12 (+8d) |  |
| 48 | Design and Implementation of a better tearing strategy | 2012-06-05 → 2012-06-13 (+8d) | 2012-07-30 → 2012-08-07 (+8d) |  |
| 49 | Improvement and Robostness of initialization | 2012-06-01 → 2012-06-11 (+10d) | 2012-07-12 → 2012-07-20 (+8d) |  |
| 50 | Implement of Homotopy operator | 2012-06-01 → 2012-06-11 (+10d) | 2012-07-12 → 2012-07-20 (+8d) |  |
| 51 | Dynamic State Selection | 2012-06-01 → 2012-06-11 (+10d) | 2012-06-01 → 2012-06-11 (+10d) |  |
| 52 | Non-Expanded arrays | 2012-07-18 → 2012-07-26 (+8d) | 2012-12-04 → 2012-12-12 (+8d) |  |
| 53 | Compressed DASSL | 2012-06-05 → 2012-06-13 (+8d) | 2012-06-11 → 2012-06-19 (+8d) |  |
| 54 | revise BackendDAEUtil.getSolvedSystem | 2012-06-01 → 2012-06-11 (+10d) | 2012-06-14 → 2012-06-22 (+8d) |  |
| 55 | reduce compile time of runtime | 2012-08-10 → 2012-08-20 (+10d) | 2012-08-16 → 2012-08-24 (+8d) |  |
| 56 | **Other Things** | 2012-06-01 → 2012-06-11 (+10d) | 2012-07-12 → 2012-07-20 (+8d) |  |
| 57 | Finalize prototype uncertainty | 2012-06-01 → 2012-06-11 (+10d) | 2012-06-14 → 2012-06-22 (+8d) |  |
| 58 | Extend Test suite | 2012-06-01 → 2012-06-11 (+10d) | 2012-07-12 → 2012-07-20 (+8d) |  |
| 59 | **FMI** | 2012-06-01 → 2012-06-11 (+10d) | 2012-08-16 → 2012-08-24 (+8d) | was named Update FMI including co-simulation |
| 60 | **FMI Comman Functionality** | 2012-06-01 → 2012-06-11 (+10d) | 2012-06-21 → 2012-06-29 (+8d) |  |
| 61 | Common header files, functions, platform depended definitions. | 2012-06-01 → 2012-06-11 (+10d) | 2012-06-07 → 2012-06-15 (+8d) |  |
| 62 | XML parser, loading and validating the dynamic link library (dll/so). | 2012-06-08 → 2012-06-18 (+10d) | 2012-06-14 → 2012-06-22 (+8d) |  |
| 63 | FMU Instances creation, logging. | 2012-06-15 → 2012-06-25 (+10d) | 2012-06-21 → 2012-06-29 (+8d) |  |
| 64 | FMI-Unit for Co-Simulation | 2012-06-01 → 2012-06-11 (+10d) | 2012-06-11 → 2012-06-19 (+8d) |  |
| 65 | FMI 2.0 Implementation (partial prototype) | 2012-06-01 → 2012-06-11 (+10d) | 2012-07-12 → 2012-07-20 (+8d) |  |
| 66 | FMI Master implementation (a) | 2012-06-22 → 2012-07-02 (+10d) | 2012-07-12 → 2012-07-20 (+8d) |  |
| 67 | FMI Master implementation (b) | 2012-07-13 → 2012-07-23 (+10d) | 2012-08-02 → 2012-08-10 (+8d) |  |
| 68 | FMI Re-Implement FMI-Import for FMI1.0 Co-Simulation and FMI2.0 usage | 2012-06-01 → 2012-06-11 (+10d) | 2012-06-28 → 2012-07-06 (+8d) |  |
| 69 | FMI Implementing communication algorithm between master and slaves. | 2012-08-03 → 2012-08-13 (+10d) | 2012-08-16 → 2012-08-24 (+8d) |  |
